Task ID,Phase,Task Name,Start Date,End Date,Duration (days),Dependencies,Resource,Critical Path (Y/N),Float Days,Status,Notes
PRE-01,Pre-Sprint,Scope decision: Option A (5-bundle) / B (parallel) / C (3-bundle),2026-05-28,2026-05-30,3,,User decision,Y,0,Pending,Must be confirmed before Phase 2 launch May 30; gates sprint planning
PRE-02,Pre-Sprint,Goldenseal path decision: live specimen order OR Wikimedia CC path,2026-05-28,2026-06-08,11,,User decision,Y,0,Pending,Hard deadline June 8; no recovery path after this date
PRE-03,Pre-Sprint,Second writer decision (Option B only),2026-05-28,2026-06-01,4,PRE-01,User decision,N,7,Pending,Only required if Option B selected; writer briefing must begin by June 1
PRE-04,Pre-Sprint,Email Strictly Medicinal Seeds — Goldenseal + Black Cohosh availability,2026-05-20,2026-05-20,1,,User / Seedwarden,N,5,Pending,Contact: info@strictlymedicinalseeds.com
PRE-05,Pre-Sprint,Email Prairie Moon Nursery — Goldenseal + Black Cohosh + Elderberry,2026-05-20,2026-05-20,1,,User / Seedwarden,N,5,Pending,Contact: info@prairiemoon.com | 866-417-8156
PRE-06,Pre-Sprint,Email Southern Exposure + Fedco Seeds — availability confirmation,2026-05-20,2026-05-20,1,,User / Seedwarden,N,10,Pending,Confirm June order capability; treat as guide-citation fallback if unavailable
PRE-07,Pre-Sprint,Place Tier 1 orders: Goldenseal + Black Cohosh (if live specimen path),2026-05-25,2026-06-08,14,PRE-04 PRE-05 PRE-02,User / Seedwarden,Y,0,Pending,Order by June 8 hard deadline; 5–6 week Prairie Moon lead time
PRE-08,Pre-Sprint,Email Mountain Rose Herbs — dried herb inquiry (all 12 species 1 oz each),2026-05-23,2026-05-23,1,,User / Seedwarden,N,21,Pending,Contact: wholesale@mountainroseherbs.com; budget $80–120
PRE-09,Pre-Sprint,Props acquisition: kraft paper / linen / mortar + pestle / glass jars / wooden tray,2026-05-26,2026-06-02,7,,User / Seedwarden,N,14,Pending,Budget $60–100; non-blocking; can order same day as other items
PRE-10,Pre-Sprint,Place Tier 2 order: Elderberry bare-root (Prairie Moon),2026-06-08,2026-06-15,7,PRE-05,User / Seedwarden,N,7,Pending,Order by June 15; 4-week lead time; local nursery potted start as fallback
PRE-11,Pre-Sprint,Place Mountain Rose Herbs dried herb order — all 12 species (1 oz each),2026-06-08,2026-06-13,5,PRE-08,User / Seedwarden,N,5,Pending,Order by June 13 for East Coast 7–10 day delivery before June 21 studio session
PRE-12,Pre-Sprint,Seedling / juvenile state photography — Calendula + Red Clover + Lemon Balm + Thyme + Lavender,2026-06-03,2026-06-09,7,PRE-09,User / Seedwarden,N,12,Pending,Local nursery starts; window light; 4 hours estimated
PRE-13,Pre-Sprint,Mature + flowering state photography — Black Cohosh + Elderberry + Echinacea,2026-06-10,2026-06-16,7,PRE-07 PRE-10,User / Seedwarden,N,5,Pending,5 hours; triggered by Tier 1–2 plant arrivals; Wikimedia CC fallback pre-staged
PRE-14,Pre-Sprint,Dried herb studio session — Mountain Rose Herbs stock (all bundles),2026-06-17,2026-06-21,5,PRE-11,User / Seedwarden,Y,1,Pending,3 hours session; background setups: Women's Health linen / Respiratory white + elderberry / Immunity dark wood / Sleep grey + lavender / Digestive kraft paper
PRE-15,Pre-Sprint,Photo editing pass: cull 100–150 raw to 50–60 keepers; warm preset; export 2400×2400px,2026-06-19,2026-06-21,3,PRE-12 PRE-13 PRE-14,User / Seedwarden,Y,1,Pending,3 hours; export at 2400×2400px for Canva cover use
PRE-16,Pre-Sprint,Attribution logging — Wikimedia CC + iNaturalist sources; WORKLOG.md entry,2026-06-21,2026-06-21,1,PRE-15,User / Seedwarden,Y,0,Pending,1 hour; zero-float — must complete before sprint Day 1
PRE-17,Pre-Sprint,Canva brand kit pre-test — load Phase 3 medicinal palette (6 hex codes); zone card test,2026-06-21,2026-06-21,1,,User / Seedwarden,N,1,Pending,0.5 hours; palette: Burgundy #8B3E3E / Sage #6B8E6F / Gold #D4AF37 / Cream #F9F5F0 / Lavender #9B8BA0 / Charcoal #2C2C2C
W1-01,Week 1 Writing,Women's Health: Intro + Black Cohosh section (conservation sidebar + Forest Grown Verified framing),2026-06-22,2026-06-22,1,PRE-16 PRE-17,Writer,Y,0,Not Started,5 hours; Black Cohosh is longest and most conservation-complex section; zero float
W1-02,Week 1 Writing,Women's Health: Vitex + Red Clover sections (invasive-watch note for Vitex; isoflavone framing for Red Clover),2026-06-23,2026-06-23,1,W1-01,Writer,Y,0,Not Started,5 hours; Vitex SE invasive note required; Red Clover forager-cohort crossover angle
W1-03,Week 1 Writing,Women's Health: Calendula + Lavender + shared sections + self-edit pass,2026-06-24,2026-06-24,1,W1-02,Writer,Y,0,Not Started,5 hours; 3,800-word Women's Health complete at end of Day 3; zero float — upload June 29 depends on this
W1-04,Week 1 Writing,Respiratory: Intro + Elderberry section (S. nigra + S. canadensis; cultivar notes; elderflower culinary crossover),2026-06-25,2026-06-25,1,W1-03,Writer,N,1,Not Started,5 hours; Elderberry is highest-searched keyword in Respiratory bundle
W1-05,Week 1 Writing,Respiratory: Mullein + Echinacea purpurea + E. angustifolia (two-species angle; UpS At-Risk section),2026-06-26,2026-06-26,1,W1-04,Writer,Y,0,Not Started,5 hours; Echinacea angustifolia conservation sidebar required; zero float for July 6–7 upload
W1-06,Week 1 Writing,Respiratory: Thyme + shared sections + Women's Health self-edit review pass,2026-06-27,2026-06-27,1,W1-05,Writer,N,2,Not Started,4 hours; 3,600-word Respiratory complete at Day 6 end; 2-day float before upload
W1-07,Week 1 Writing,Respiratory self-edit + Women's Health PDF export test + Week 2 prep,2026-06-28,2026-06-28,1,W1-06,Writer,N,2,Not Started,2 hours; confirm PDF under 5MB; check thumbnail at 170×135px Etsy preview size
W1-08,Week 1 Design,Women's Health Canva cover — Black Cohosh or Calendula hero; Deep Burgundy palette,2026-06-23,2026-06-23,1,PRE-17,Designer,N,4,Not Started,1.2 hours; hero photo must be selected from pre-sprint photo inventory
W1-09,Week 1 Design,Respiratory Canva cover — Elderberry berry cluster hero; Sage Green palette,2026-06-24,2026-06-24,1,W1-08,Designer,N,4,Not Started,1.2 hours; berry cluster visual is listing thumbnail anchor for cold/flu season buyers
W1-CHKPT,Week 1 Checkpoint,Week 1 sprint checkpoint: Women's Health word count 3800+ / Respiratory at 2000+ / Design covers started,2026-06-28,2026-06-28,1,W1-07,User review,Y,0,Not Started,If Women's Health word count below 2500 on Day 3 (June 24): activate Option C (3-bundle scope)
W2-01,Week 2 Writing,Women's Health Etsy upload (AM) + Immunity: Intro + Echinacea condensed (second occurrence; 300–400 words),2026-06-29,2026-06-29,1,W1-CHKPT,Writer,Y,0,Not Started,2 hours upload + 3 hours writing; Women's Health live June 29 — this is the first revenue milestone
W2-02,Week 2 Writing,Immunity: Ashwagandha complete (900 words; Rasayana framing; withanolide/pregnancy warning; RCT description),2026-06-30,2026-06-30,1,W2-01,Writer,N,1,Not Started,5 hours; Ashwagandha is highest practitioner search volume adaptogen; pregnancy/thyroid warning mandatory
W2-03,Week 2 Writing,Immunity: Elderberry condensed (second occurrence) + Goldenseal intro + CITES Appendix II sidebar,2026-07-01,2026-07-01,1,W2-02,Writer,Y,0,Not Started,5 hours; CITES mandatory sidebar: "Wild material requires export permit; cultivated unrestricted"; zero float
W2-04,Week 2 Writing,Immunity: Goldenseal cultivation + FGV sourcing + berberine framing + shared sections + self-edit,2026-07-02,2026-07-02,1,W2-03,Writer,Y,0,Not Started,5 hours; FGV program URL: unitedplantsavers.org/forest-grown-verified/; 3800-word Immunity complete
W2-05,Week 2 Writing,Sleep: Intro + Valerian complete (800 words; second-year root harvest; valerenic acid; drug interaction warning),2026-07-03,2026-07-03,1,W2-04,Writer,N,2,Not Started,4 hours; drug interaction warning mandatory: "may potentiate sedative medications — consult provider"
W2-06,Week 2 Writing,Sleep: Passionflower complete (700 words; maypop forager crossover; trellis requirements; Appalachian use),2026-07-04,2026-07-04,1,W2-05,Writer,N,2,Not Started,4 hours; Passionflower is the visual thumbnail anchor for Sleep bundle listing
W2-07,Week 2 Writing,Sleep: Lemon Balm condensed + Lavender condensed + shared sections + self-edit pass,2026-07-05,2026-07-05,1,W2-06,Writer,N,2,Not Started,4 hours; both shared species (~300 words each); 3500-word Sleep complete; 2-day float
W2-08,Week 2 Design,Immunity Canva cover — Goldenseal root or Ashwagandha hero; Deep Burgundy palette,2026-06-29,2026-06-29,1,W1-CHKPT,Designer,N,4,Not Started,1.2 hours; runs parallel to W2-01 writing; Goldenseal forest-farm photo if available
W2-09,Week 2 Design,Sleep Canva cover — Passionflower flower hero (unmistakable purple/white); Muted Lavender palette,2026-06-30,2026-06-30,1,W2-08,Designer,N,3,Not Started,1.2 hours; Passionflower is the highest-impact thumbnail in all 5 bundles
W2-10,Week 2 Design,Women's Health zone card (Apothecary Gold accent; existing zone card template),2026-07-01,2026-07-01,1,W1-08,Designer,N,8,Not Started,0.8 hours; zone card template loaded from Phase 2 Track B; high float
W2-11,Week 2 Design,Respiratory zone card,2026-07-02,2026-07-02,1,W1-09,Designer,N,8,Not Started,0.8 hours; 8-day float — purely parallel task
W2-CHKPT,Week 2 Checkpoint,Week 2 sprint checkpoint: Immunity 3800 words done / Sleep 3500 words done / Respiratory upload queued,2026-07-05,2026-07-05,1,W2-07,User review,Y,0,Not Started,If Immunity writing not complete by July 5: activate Contingency 3 — shift Immunity upload to July 27
W3-01,Week 3 Writing,Respiratory upload (AM) + Digestive: Intro + Dandelion complete (900 words; forager-to-herbalist cross-sell hook),2026-07-06,2026-07-06,1,W2-CHKPT,Writer,N,1,Not Started,2 hours upload + 5 hours writing; Dandelion cross-sell hook is the most important bridge in Phase 3
W3-02,Week 3 Writing,Digestive: Calendula (digestive framing; mucosal support; tea not oil) + Lemon Balm (carminative) + shared sections,2026-07-07,2026-07-07,1,W3-01,Writer,N,1,Not Started,4 hours; both are second-occurrence shared species (~300–400 words each); production efficiency
W3-03,Week 3 Writing,Digestive: Ginger complete (700 words; untreated rhizome sourcing; gingerol/shogaol framing; nausea evidence),2026-07-08,2026-07-08,1,W3-02,Writer,N,2,Not Started,4 hours; 3600-word Digestive complete; note grocery-store rhizome must be verified untreated
W3-04,Week 3 Writing,FTC language review — all 5 bundles; disease claim audit; contraindications completeness check,2026-07-09,2026-07-09,1,W3-03,Writer / Editor,N,2,Not Started,3 hours; mandatory for Women's Health (Black Cohosh / Vitex) and Immunity (Goldenseal CITES / Ashwagandha pregnancy)
W3-05,Week 3 Writing,SEO optimization pass — Etsy title/tag keyword density check; confirm 13 tags × under 20 chars per bundle,2026-07-10,2026-07-10,1,W3-04,Writer,N,2,Not Started,2 hours; keyword targets per bundle confirmed in etsy-listing templates file
W3-06,Week 3 Writing,PDF export all 5 bundles from Canva: verify under 5MB / no placeholders / images attributed / covers 2400×2400px,2026-07-11,2026-07-11,1,W3-05,Writer / Designer,N,1,Not Started,2 hours; includes upload prep: file naming / practitioner variant staging / Etsy listing QA
W3-07,Week 3 Design,Digestive cover — Dandelion root cross-section or fresh Ginger rhizome hero; Sage Green palette,2026-07-03,2026-07-03,1,W2-11,Designer,Y,0,Not Started,1.2 hours; zero float — Design Lock July 3 is a hard deadline; no design changes after this date
W3-08,Week 3 Design,DESIGN LOCK July 3 — no cover or zone card changes after this date,2026-07-03,2026-07-03,1,W3-07,Designer,Y,0,Gate,All 5 covers finalized; zone card designs locked; PDF layout frozen
W3-09,Week 3 Design,Immunity zone card,2026-07-06,2026-07-06,1,W2-09,Designer,N,2,Not Started,0.8 hours; 2-day float; parallel to writing track
W3-10,Week 3 Design,Sleep zone card,2026-07-07,2026-07-07,1,W3-09,Designer,N,2,Not Started,0.8 hours; lavender sachet / passionflower motif; 2-day float
W3-11,Week 3 Design,Digestive zone card,2026-07-06,2026-07-06,1,W3-08,Designer,N,2,Not Started,0.8 hours; kraft paper / dandelion motif; 2-day float
W3-12,Week 3 Design,Template consistency review + export test all 5 covers (thumbnail crop at 170×135px),2026-07-07,2026-07-07,1,W3-10 W3-11,Designer,N,2,Not Started,0.5 hours; final pre-export quality check; confirm all covers pass Etsy thumbnail crop
FLOAT-01,Float,Float Day 1 — absorb writing overrun OR Sleep Etsy upload staging prep,2026-07-12,2026-07-12,1,W3-06,User / Writer,N,8,Not Started,8 hours available float; Sleep upload can stage here if PDF export was delayed
FLOAT-02,Float,Float Day 2 — Sleep upload live; sprint retrospective; WORKLOG.md update,2026-07-13,2026-07-13,1,FLOAT-01,User / Writer,N,4,Not Started,4 hours available float; sprint formally closes; bundle 3 of 5 live on Etsy
UPL-01,Upload,UPLOAD: Women's Health (MH-BUNDLE-WH-001 / $22) + practitioner 10-pack,2026-06-29,2026-06-29,1,W2-01,User / Seedwarden,Y,0,Scheduled,First revenue milestone; simultaneously activate Kit women-health-interest + all-bundles-preview email tags
UPL-02,Upload,UPLOAD: Respiratory Health (MH-BUNDLE-RH-001 / $20) + practitioner 10-pack,2026-07-06,2026-07-07,2,W3-01,User / Seedwarden,Y,0,Scheduled,7-day spacing from WH upload; Elderberry keyword peak begins July; Kit respiratory-interest tag
UPL-03,Upload,UPLOAD: Sleep and Nervines (MH-BUNDLE-SN-001 / $20) + practitioner 10-pack,2026-07-13,2026-07-13,1,FLOAT-02,User / Seedwarden,Y,0,Scheduled,Sprint end upload; summer burnout intent peak; Kit sleep-interest tag; 3 bundles live at sprint close
UPL-04,Upload (Post-Sprint),UPLOAD: Immunity Support (MH-BUNDLE-IM-001 / $22) + practitioner 10-pack,2026-07-20,2026-07-20,1,W2-04,User / Seedwarden,N,7,Scheduled,Post-sprint; builds toward November cold/flu peak; Kit immunity-interest tag
UPL-05,Upload (Post-Sprint),UPLOAD: Digestive Support (MH-BUNDLE-DS-001 / $20) + practitioner 10-pack,2026-08-03,2026-08-03,1,W3-03,User / Seedwarden,N,14,Scheduled,14-day gap from Immunity; August forager crossover; FORAGER20 coupon cross-sell trigger active
CONT-01,Contingency,CONTINGENCY 1: Activate Wikimedia CC photo path for Goldenseal (if no order by June 7 EOD),2026-06-07,2026-06-08,1,PRE-07,User / Seedwarden,N,0,Contingency,Email media@ncbg.unc.edu + media@mobot.org; download 3–5 CC-BY-SA Wikimedia images; log in WORKLOG.md
CONT-02,Contingency,CONTINGENCY 2: Activate Option C (3-bundle scope) if Women's Health below 2500 words on Day 3,2026-06-24,2026-06-24,1,W1-03,User / Writer,N,0,Contingency,Move Sleep to Week 2; defer Immunity + Digestive to August; Women's Health June 29 + Respiratory July 6 + Sleep July 13 preserved
CONT-03,Contingency,CONTINGENCY 3: Shift Immunity upload July 27 if writing not complete by July 5,2026-07-05,2026-07-05,1,W2-CHKPT,User / Writer,N,0,Contingency,Negligible revenue impact; all bundles still live before August 10; holiday window fully preserved
CONT-04,Contingency,CONTINGENCY 4: Activate Google Docs PDF fallback if any Canva cover exceeds 2 hours,2026-06-22,2026-07-12,21,W1-08 W1-09 W2-08 W2-09,Designer,N,21,Contingency,Google Docs header + title + zone indicator as text; export PDF; Canva becomes v1.1 design upgrade post-launch
CONT-05,Contingency,CONTINGENCY 5: Minimum viable launch (2–3 bundles) if fewer than 3 complete by July 9,2026-07-09,2026-07-09,1,W3-04,User review,N,0,Contingency,Priority order: (1) Women's Health (2) Sleep and Nervines (3) Respiratory; defer remaining to Aug–Sep
RSRC-01,Resource Summary,Week 1 resource total (June 22–28): Writing 31 hrs / Design 2.4 hrs / Photography 10 hrs (pre-sprint) = 43.4 hrs,2026-06-22,2026-06-28,7,,—,—,—,—,Reference,Per-day average 6.2 hrs; heaviest week; Women's Health + Respiratory both in progress
RSRC-02,Resource Summary,Week 2 resource total (June 29–July 5): Writing 28 hrs / Design 4.4 hrs / Upload admin 2 hrs = 34.4 hrs,2026-06-29,2026-07-05,7,,—,—,—,—,Reference,Per-day average 4.9 hrs; Immunity + Sleep writing; Women's Health upload Day 1
RSRC-03,Resource Summary,Week 3 resource total (July 6–13): Writing 18 hrs / Design 4.3 hrs / Upload admin 4 hrs / Float 12 hrs = 38.3 hrs,2026-07-06,2026-07-13,8,,—,—,—,—,Reference,Includes 2 float days (12 hrs buffer); Respiratory + Sleep upload; Digestive writing complete
RSRC-04,Resource Summary,Sprint total (June 22–July 13): ~116 hrs gross / ~104 hrs working (with float); 22-day window; avg 4.7 hrs/day,2026-06-22,2026-07-13,22,,—,—,—,—,Reference,Post-sprint: Immunity Jul 20 + Digestive Aug 3; all 5 bundles live by Aug 3 on nominal plan
